# Demolition and Rehabilitation of Joel Plant Gold Plant: Phase 03-07

Schedule from MS Project XML, 2027-12-07 to 2029-09-07.

## Calendars

- South Africa Standard Working Calendar: Mon-Fri 08:00-12:00, 13:00-17:00; Sat-Sun off. Exceptions (off unless hours are given): 2027-12-16 (Day of Reconciliation), 2027-12-18 to 2028-01-11 (Contractor Break 2027-2028), 2027-12-25 (Christmas Day), 2027-12-26 (Day of Goodwill), 2027-12-27 (Day of Goodwill (Observed)), 2028-01-01 (New Year's Day), 2028-03-21 (Human Rights Day), 2028-04-14 (Good Friday), 2028-04-17 (Family Day), 2028-04-27 (Freedom Day), 2028-05-01 (Workers' Day), 2028-06-16 (Youth Day), 2028-08-09 (National Women's Day), 2028-09-24 (Heritage Day), 2028-09-25 (Heritage Day (Observed)), 2028-12-16 (Day of Reconciliation), 2028-12-18 to 2029-01-11 (Contractor Break 2028-2029), 2028-12-25 (Christmas Day), 2028-12-26 (Day of Goodwill), 2029-01-01 (New Year's Day), 2029-03-21 (Human Rights Day), 2029-03-30 (Good Friday), 2029-04-02 (Family Day), 2029-04-27 (Freedom Day), 2029-05-01 (Workers' Day), 2029-06-16 (Youth Day), 2029-08-09 (National Women's Day).

## Schedule

| ID | WBS | Task | Type | Duration | Start | Finish | Predecessors | Work |
| --- | --- | --- | --- | --- | --- | --- | --- | --- |
| 1 | 1 | **Demolition and Rehabilitation of Joel Plant Gold Plant: Phase 03-07** |  | 407d | 2027-12-07 | 2029-09-07 |  | 3256h |
| 2 | 1.1 | **Phase 03 - Demolition and Rehabilitation** |  | 71d | 2027-12-07 | 2028-04-11 |  | 568h |
| 3 | 1.1.1 | Health & Safety and Environmental Compliance (activity #1 - 07/11/26) |  | 20d | 2027-12-07 | 2028-01-27 |  | 160h |
| 4 | 1.1.2 | Site Establishment |  | 5d | 2028-01-28 | 2028-02-03 | 3 | 40h |
| 5 | 1.1.3 | Confirm Phase 03 workfront release and isolation |  | 2d | 2028-02-04 | 2028-02-07 | 4 | 16h |
| 6 | 1.1.4 | Break up and pulverise above-ground concrete and brickwork |  | 12d | 2028-02-08 | 2028-02-23 | 5 | 96h |
| 7 | 1.1.5 | Expose, break up and pulverise below-ground concrete and brickwork |  | 10d | 2028-02-24 | 2028-03-08 | 6 | 80h |
| 8 | 1.1.6 | Cut, segregate and remove reinforcement and steel structures |  | 8d | 2028-03-09 | 2028-03-20 | 7 | 64h |
| 9 | 1.1.7 | Load, haul and stockpile pulverised material on site |  | 7d | 2028-03-22 | 2028-03-30 | 8 | 56h |
| 10 | 1.1.8 | Shape, level and clean the work area |  | 5d | 2028-03-31 | 2028-04-06 | 9 | 40h |
| 11 | 1.1.9 | Inspect rehabilitated area and close Phase 03 |  | 2d | 2028-04-07 | 2028-04-10 | 10 | 16h |
| 12 | 1.1.10 | Phase 03 complete | milestone | 0d | 2028-04-11 | 2028-04-11 | 11 |  |
| 13 | 1.2 | **Phase 02 - Demolition and Rehabilitation** |  | 63d | 2028-04-11 | 2028-07-14 |  | 504h |
| 14 | 1.2.1 | Confirm Phase 02 workfront release and isolation |  | 3d | 2028-04-11 | 2028-04-13 | 12 | 24h |
| 15 | 1.2.2 | Break up and pulverise above-ground concrete and brickwork |  | 16d | 2028-04-18 | 2028-05-11 | 14 | 128h |
| 16 | 1.2.3 | Expose, break up and pulverise below-ground concrete and brickwork |  | 15d | 2028-05-12 | 2028-06-01 | 15 | 120h |
| 17 | 1.2.4 | Cut, segregate and remove reinforcement and steel structures |  | 12d | 2028-06-02 | 2028-06-20 | 16 | 96h |
| 18 | 1.2.5 | Load, haul and stockpile pulverised material on site |  | 10d | 2028-06-21 | 2028-07-04 | 17 | 80h |
| 19 | 1.2.6 | Shape, level and clean the work area |  | 5d | 2028-07-05 | 2028-07-11 | 18 | 40h |
| 20 | 1.2.7 | Inspect rehabilitated area and close Phase 02 |  | 2d | 2028-07-12 | 2028-07-13 | 19 | 16h |
| 21 | 1.2.8 | Phase 02 complete | milestone | 0d | 2028-07-14 | 2028-07-14 | 20 |  |
| 22 | 1.3 | **Phase 04 - Demolition and Rehabilitation** |  | 50d | 2028-07-14 | 2028-09-26 |  | 400h |
| 23 | 1.3.1 | Confirm Phase 04 workfront release and isolation |  | 2d | 2028-07-14 | 2028-07-17 | 21 | 16h |
| 24 | 1.3.2 | Confirm dam workfront release and environmental controls |  | 3d | 2028-07-18 | 2028-07-20 | 23 | 24h |
| 25 | 1.3.3 | Break up and pulverise above-ground concrete and brickwork |  | 8d | 2028-07-21 | 2028-08-01 | 24 | 64h |
| 26 | 1.3.4 | Expose, break up and pulverise below-ground concrete and brickwork |  | 8d | 2028-08-02 | 2028-08-14 | 25 | 64h |
| 27 | 1.3.5 | Demolish and pulverise the on-site dam structures |  | 8d | 2028-08-15 | 2028-08-24 | 26 | 64h |
| 28 | 1.3.6 | Cut, segregate and remove reinforcement and steel structures |  | 5d | 2028-08-25 | 2028-08-31 | 27 | 40h |
| 29 | 1.3.7 | Load, haul and stockpile pulverised material on site |  | 4d | 2028-09-01 | 2028-09-06 | 28 | 32h |
| 30 | 1.3.8 | Load and haul designated material from Joel Gold Plant to Target Gold Plant |  | 6d | 2028-09-07 | 2028-09-14 | 29 | 48h |
| 31 | 1.3.9 | Shape, level and clean the work area |  | 4d | 2028-09-15 | 2028-09-20 | 30 | 32h |
| 32 | 1.3.10 | Inspect rehabilitated area and close Phase 04 |  | 2d | 2028-09-21 | 2028-09-22 | 31 | 16h |
| 33 | 1.3.11 | Phase 04 complete | milestone | 0d | 2028-09-26 | 2028-09-26 | 32 |  |

| ID | WBS | Task | Type | Duration | Start | Finish | Predecessors | Work |
| --- | --- | --- | --- | --- | --- | --- | --- | --- |
| 34 | 1.4 | **Phase 01 - Demolition and Rehabilitation** |  | 88d | 2028-09-26 | 2029-02-22 |  | 704h |
| 35 | 1.4.1 | Confirm Phase 01 workfront release and isolation |  | 3d | 2028-09-26 | 2028-09-28 | 33 | 24h |
| 36 | 1.4.2 | Break up and pulverise above-ground concrete and brickwork |  | 24d | 2028-09-29 | 2028-11-01 | 35 | 192h |
| 37 | 1.4.3 | Expose, break up and pulverise below-ground concrete and brickwork |  | 22d | 2028-11-02 | 2028-12-01 | 36 | 176h |
| 38 | 1.4.4 | Cut, segregate and remove reinforcement and steel structures |  | 16d | 2028-12-04 | 2029-01-19 | 37 | 128h |
| 39 | 1.4.5 | Load and haul pulverised material to Target Plant and stockpile on site |  | 14d | 2029-01-22 | 2029-02-08 | 38 | 112h |
| 40 | 1.4.6 | Shape, level and clean the work area |  | 6d | 2029-02-09 | 2029-02-16 | 39 | 48h |
| 41 | 1.4.7 | Inspect rehabilitated area and close Phase 01 |  | 3d | 2029-02-19 | 2029-02-21 | 40 | 24h |
| 42 | 1.4.8 | Phase 01 complete | milestone | 0d | 2029-02-22 | 2029-02-22 | 41 |  |
| 43 | 1.5 | **Phase 06 - Demolition and Rehabilitation** |  | 72d | 2029-02-22 | 2029-06-11 |  | 576h |
| 44 | 1.5.1 | Confirm Phase 06 workfront release and isolation |  | 3d | 2029-02-22 | 2029-02-26 | 42 | 24h |
| 45 | 1.5.2 | Break up and pulverise above-ground concrete and brickwork |  | 18d | 2029-02-27 | 2029-03-23 | 44 | 144h |
| 46 | 1.5.3 | Expose, break up and pulverise below-ground silo foundations |  | 18d | 2029-03-26 | 2029-04-20 | 45 | 144h |
| 47 | 1.5.4 | Cut, segregate and remove reinforcement and steel structures |  | 12d | 2029-04-23 | 2029-05-10 | 46 | 96h |
| 48 | 1.5.5 | Load, haul and stockpile pulverised material on site |  | 8d | 2029-05-11 | 2029-05-22 | 47 | 64h |
| 49 | 1.5.6 | Load and haul designated material from Joel Gold Plant to Target Gold Plant |  | 7d | 2029-05-23 | 2029-05-31 | 48 | 56h |
| 50 | 1.5.7 | Shape, level and clean the work area |  | 4d | 2029-06-01 | 2029-06-06 | 49 | 32h |
| 51 | 1.5.8 | Inspect rehabilitated area and close Phase 06 |  | 2d | 2029-06-07 | 2029-06-08 | 50 | 16h |
| 52 | 1.5.9 | Phase 06 complete | milestone | 0d | 2029-06-11 | 2029-06-11 | 51 |  |
| 53 | 1.6 | **Phase 07 - Demolition and Rehabilitation** |  | 63d | 2029-06-11 | 2029-09-07 |  | 504h |
| 54 | 1.6.1 | Confirm Phase 07 workfront release and isolation |  | 3d | 2029-06-11 | 2029-06-13 | 52 | 24h |
| 55 | 1.6.2 | Break up and pulverise above-ground concrete and brickwork |  | 16d | 2029-06-14 | 2029-07-05 | 54 | 128h |
| 56 | 1.6.3 | Expose, break up and pulverise below-ground concrete and brickwork |  | 14d | 2029-07-06 | 2029-07-25 | 55 | 112h |
| 57 | 1.6.4 | Cut, segregate and remove reinforcement and steel structures |  | 12d | 2029-07-26 | 2029-08-13 | 56 | 96h |
| 58 | 1.6.5 | Load, haul and stockpile pulverised material on site |  | 10d | 2029-08-14 | 2029-08-27 | 57 | 80h |
| 59 | 1.6.6 | Shape, level and clean the work area |  | 6d | 2029-08-28 | 2029-09-04 | 58 | 48h |
| 60 | 1.6.7 | Inspect rehabilitated area and close Phase 07 |  | 2d | 2029-09-05 | 2029-09-06 | 59 | 16h |
| 61 | 1.6.8 | Phase 07 complete | milestone | 0d | 2029-09-07 | 2029-09-07 | 60 |  |
